# 2025产品研发整体进度计划

Schedule from a web Gantt chart, 2024-10-14 to 2025-08-29.
Saturdays and Sundays are off

## Schedule

| ID | WBS | Task | Type | Duration | Start | Finish | Complete | inPeople |
| --- | --- | --- | --- | --- | --- | --- | --- | --- |
| 2 | 1 | 3.6.1开发 |  | 21d | 2024-12-06 | 2025-01-03 | 90% | 李忠洋；郭金玺；汪书刚 |
| 3 | 2 | **成都院交付（引擎层）** |  | 85d | 2024-10-14 | 2025-02-07 | 40% |  |
| 4 | 2.1 | **离线查看器** |  | 65d | 2024-10-14 | 2025-01-10 | 91% |  |
| 5 | 2.1.1 | 离线查看客户端 | fixed start | 65d | 2024-10-14 | 2025-01-10 | 90% | 裴贺威 |
| 6 | 2.1.2 | 离线包导出功能（平台） | fixed end | 15d | 2024-12-23 | 2025-01-10 | 95% | 郭金玺；汪书刚 |
| 7 | 2.2 | **操作优化** |  | 15d | 2025-01-20 | 2025-02-07 |  |  |
| 8 | 2.2.1 | 三点对位 |  | 5d | 2025-01-20 | 2025-01-24 |  | 李坡 |
| 9 | 2.2.2 | 面夹角测量 |  | 2d | 2025-01-27 | 2025-01-28 |  | 李坡 |
| 10 | 2.2.3 | 面距离测量 |  | 3d | 2025-02-05 | 2025-02-07 |  | 李坡 |
| 11 | 2.3 | **3.6.1.1发布** |  | 15d | 2025-01-06 | 2025-01-24 |  |  |
| 12 | 2.3.1 | 历史版本目录树和属性 |  | 15d | 2025-01-06 | 2025-01-24 |  | 汪书刚 |
| 13 | 3 | **公路院课题交付** |  | 109d | 2025-01-03 | 2025-06-04 |  |  |
| 14 | 3.1 | 地形系统的多坐标系兼容改造 |  | 20d | 2025-01-03 | 2025-01-30 |  | 王栋栋 |
| 15 | 3.2 | wms、wmts服务的直接接入 |  | 20d | 2025-02-10 | 2025-03-07 |  | 李坡 |
| 16 | 3.3 | 全局矢量的点线面绘制（贴地矢量） |  | 3d | 2025-03-10 | 2025-03-12 |  | 李坡 |
| 17 | 3.4 | 获取干系瓦片的最高精度数据并重采样 |  | 7d | 2025-03-13 | 2025-03-21 |  | 李坡 |
| 18 | 3.5 | 相机2D锁定和地上锁定 |  | 2d | 2025-03-24 | 2025-03-25 |  | 李坡 |
| 19 | 3.6 | 模型不被地形遮挡的绘制模式 |  | 1d | 2025-03-26 | 2025-03-26 |  | 李坡 |
| 20 | 3.7 | gis天际线、通视分析等功能 |  | 30d | 2025-03-27 | 2025-05-07 |  | 李坡 |
| 21 | 3.8 | 矢量瓦片的接入（基础解析）-扩展 |  | 15d | 2025-05-15 | 2025-06-04 |  | 李坡 |
| 22 | 4 | **云渲染交付** |  | 52d | 2024-12-23 | 2025-03-04 |  |  |
| 23 | 4.1 | 云渲染基础部分完善 |  | 20d | 2024-12-23 | 2025-01-17 |  | 王栋栋 |
| 24 | 4.2 | 云渲染服务器组件开发 |  | 15d | 2024-12-30 | 2025-01-17 |  | 张昆峰 |
| 25 | 4.3 | 使用云渲染模式的前端页面开发 |  | 5d | 2025-01-13 | 2025-01-17 |  | 郭金玺 |
| 26 | 4.4 | 云渲染接口层实现 |  | 20d | 2025-02-05 | 2025-03-04 |  | 程凯 |

Notes:
- 2: 平台权限系统重构
- 11: 这个版本规划了成都院需要的接口监控，场景统计等平台功能
- 26: 接口不是一次性加完，按使用频度逐步加入

| ID | WBS | Task | Duration | Start | Finish | inPeople |
| --- | --- | --- | --- | --- | --- | --- |
| 27 | 5 | **粒子系统（引擎模块）** | 15d | 2024-12-30 | 2025-01-17 |  |
| 28 | 5.1 | 水粒子更新改为GPU管线 | 5d | 2024-12-30 | 2025-01-03 | 李坡 |
| 29 | 5.2 | 烟雾和火焰 | 10d | 2025-01-06 | 2025-01-17 | 李坡 |
| 30 | 6 | **动画系统引擎层** | 65d | 2025-01-13 | 2025-04-11 |  |
| 31 | 6.1 | 场景爆炸效果的优化 | 20d | 2025-01-13 | 2025-02-07 | 魏家霖 |
| 32 | 6.2 | 列车汽车路径动画的封装 | 15d | 2025-02-24 | 2025-03-14 | 魏家霖 |
| 33 | 6.3 | 触发器系统的实现 | 20d | 2025-03-17 | 2025-04-11 | 王栋栋；魏家霖 |
| 34 | 7 | **3.6.2版本开发** | 50d | 2025-02-10 | 2025-04-18 |  |
| 35 | 7.1 | 水面、单体化、开挖 | 10d | 2025-02-10 | 2025-02-21 | 李忠洋；郭金玺；汪书刚 |
| 36 | 7.2 | 单构件编辑 | 10d | 2025-02-26 | 2025-03-11 | 李忠洋；郭金玺；汪书刚 |
| 37 | 7.3 | 粒子编辑 | 10d | 2025-03-17 | 2025-03-28 | 李忠洋；郭金玺；汪书刚 |
| 38 | 7.4 | 点光源编辑 | 10d | 2025-04-07 | 2025-04-18 | 李忠洋；郭金玺；汪书刚 |
| 39 | 8 | **3.6.3版本开发** | 40d | 2025-05-12 | 2025-07-04 |  |
| 40 | 8.1 | 动画交互编辑 | 40d | 2025-05-12 | 2025-07-04 | 李忠洋；郭金玺；汪书刚 |
| 41 | 9 | 3DTiles数据的连通性扩展 | 40d | 2025-01-02 | 2025-02-26 | 宋钰涛；裴贺威 |
| 42 | 10 | 移动端app中目录树，属性等的实现 | 20d | 2025-03-10 | 2025-04-04 | 程凯； |
| 43 | 11 | 移动端app跟平台账户的数据对接 | 10d | 2025-04-10 | 2025-04-23 | 程凯； |
| 44 | 12 | 平台功能模块JS再封装 | 20d | 2025-07-07 | 2025-08-01 | 李忠洋；郭金玺 |
| 45 | 13 | 平台页面的嵌入式需求 | 20d | 2025-08-04 | 2025-08-29 | 李忠洋；郭金玺 |
| 46 | 14 | **BIM分析** | 52d | 2025-04-01 | 2025-06-11 |  |
| 47 | 14.1 | 构件的碰撞检查（算法设计） | 3d | 2025-04-01 | 2025-04-03 | 王栋栋；魏家霖 |
| 48 | 14.2 | 卷帘对比 | 3d | 2025-06-09 | 2025-06-11 | 李坡 |
| 49 | 15 | **开发者中心的完善** | 1d | 2024-10-14 | 2024-10-14 |  |
| 50 | 15.1 | 单功能demo的完善 | 1d | 2024-10-14 | 2024-10-14 | 程凯 |
| 51 | 15.2 | 面向业务场景的集成化demo的制作 | 1d | 2024-10-14 | 2024-10-14 | 郭金玺，程凯 |
| 52 | 16 | sqlSugar的读写分离实现 | 1d | 2024-10-14 | 2024-10-14 | 李忠洋 |
| 53 | 17 | FTP方式下载、上传用于转换 | 1d | 2024-10-14 | 2024-10-14 | 李忠洋 |
| 54 | 18 | appFiles.sig的全体用户更新 | 1d | 2024-10-14 | 2024-10-14 | 实施部门 |
| 55 | 19 | WebGPU 多材质、指定材质的研究 | 30d | 2025-02-17 | 2025-03-28 | 王栋栋 |

Notes:
- 40: 在此任务开始前穿插了公路院的相关平台工作

| ID | WBS | Task | Duration | Start | Finish | inPeople |
| --- | --- | --- | --- | --- | --- | --- |
| 56 | 20 | **AIGC** | 65d | 2025-03-10 | 2025-06-06 |  |
| 57 | 20.1 | 静帧画质增强 | 20d | 2025-03-10 | 2025-04-04 | 宋钰涛 |
| 58 | 20.2 | 接入文生模、图生模等功能 | 40d | 2025-04-14 | 2025-06-06 | 宋钰涛 |
| 59 | 21 | 虚拟设备的对接 | 15d | 2025-05-12 | 2025-05-30 | 王栋栋 |
| 60 | 22 | 物理仿真--科委课题的研究 | 1d | 2024-10-14 | 2024-10-14 | 魏家霖 |
| 61 | 23 | 离线查看器的二开支持 | 1d | 2024-10-14 | 2024-10-14 | 裴贺威 |
| 62 | 24 | 3.5.1中延后实现的矢量样式配置功能 | 1d | 2024-10-14 | 2024-10-14 | 李忠洋；郭金玺；汪书刚 |
